# 动吧

Schedule from GanttProject, 2017-12-12 to 2018-04-16.
工期：2017/12-2018/06 / 店铺数量：成都市主要经济区、人口聚集区店铺数量大概3000家。 / 目标： / 1、2017/12 / （1）店铺端后端主体基本开发完成（消费端、移动端需使用的）； / （2）平台管理部分主要基础模块开发完成上线（店铺端需使用的）； / 2、2018/01: / （1）完成私教端主要后端服务； / （2）完成消费端主要后端服务； / （3）完成平台管理服务主要功能（店铺、消费、教练相关的）； / （4）成立成都动吧信息科技有限公司； / （5）完成UI招聘； / 3、2018/02： / 年前： / （1）完移动端（2人）开发人员招聘； / （2）完成店铺、消费、私教端后端开发； / （3）完成平台服务开发； / （4）完成私教端、消费端、公司主页UI设计； / 年后： / （1）完成公司相关所有域名注册（dber.com.cn）； / （2）完成店铺端界面开发、并且上线店铺端； / （3）公司主页开发及上线； / （4）开始开发私教端移动端； / （5）开始开发消费端移动端； / （5）完成销售招聘、绩效策略、培训等（5-10人）； / （6）联系地铁广告位租赁； / 4、2018/03 / （1）3月店铺销售目标500，店铺达到200家则具备消费端上线条件； / 上旬： / （1）私教端移动端上线内测； / （2）消费端移动端上线内测； / （3）招募线下消费端及私教端推广人员； / 下旬： / （1）线下私教推广，三月底目标认证私教数500人； / （2）在25前完成店铺端、私教端、消费端内测完善； / （3）27日所有平台正式上线； / （4）30日开始为期一个月的线下推广； / 5、2018/04 / （1）地铁广告位为期一个月推广； / （2）线下推广为期一个月，周末人流量密集商业区域推广、工作日园区推广； / （3）店铺目标800家； / （4）消费端用户量达到10w人； / （5）私教1000人； / 6、2018/05-06 / （1）销售开辟新市场（北、上、深、武）； / （2）技术扩招； / （3）完善公司组织结构； / （4）准备北、上、深、武系统上线； / （5）成都市场，加盟店铺占全市店铺的50%，私教人数达到3000人，消费端达到50w；
Holidays every year on 02-15

## Calendars

- Project calendar: Mon-Fri working; Sat off; Sun working. Exceptions (off unless hours are given): 2018-02-15 to 2018-02-20.

## Schedule

| ID | WBS | Task | Duration | Start | Finish | Predecessors | Complete |
| --- | --- | --- | --- | --- | --- | --- | --- |
| 1 | 1 | **动吧项目进度计划2017/12-2018/03月底** | 103d | 2017-12-12 | 2018-04-16 |  |  |
| 2 | 1.1 | **2017/12** | 17d | 2017-12-12 | 2017-12-31 |  | 6% |
| 3 | 1.1.1 | **店铺端、消费端、教练端、平台表结构设计及基础框架搭建** | 8d | 2017-12-12 | 2017-12-20 |  |  |
| 4 | 1.1.1.1 | 店铺端、消费端、教练端、平台表结构设计 | 5d | 2017-12-12 | 2017-12-17 |  |  |
| 5 | 1.1.1.2 | 基础框架搭建 | 3d | 2017-12-18 | 2017-12-20 | 4 |  |
| 6 | 1.1.2 | **店铺端后端主体基本开发完成（消费端需使用的）** | 3d | 2017-12-21 | 2017-12-24 | 3 | 5% |
| 7 | 1.1.2.1 | 基本信息 | 1d | 2017-12-21 | 2017-12-21 |  | 11% |
| 8 | 1.1.2.2 | 店铺环境 | 1d | 2017-12-21 | 2017-12-21 |  | 11% |
| 9 | 1.1.2.3 | 店铺认证 | 1d | 2017-12-22 | 2017-12-22 | 7 |  |
| 10 | 1.1.2.4 | 二维码标志 | 1d | 2017-12-24 | 2017-12-24 | 9 |  |
| 11 | 1.1.3 | **平台管理部分主要基础模块开发完成上线（店铺端需使用的）** | 5d | 2017-12-25 | 2017-12-29 | 6 | 20% |
| 12 | 1.1.3.1 | 平台参数管理 | 1d | 2017-12-25 | 2017-12-25 |  |  |
| 13 | 1.1.3.2 | 角色权限管理 | 3d | 2017-12-26 | 2017-12-28 | 12 |  |
| 14 | 1.1.3.3 | 登录管理 | 1d | 2017-12-29 | 2017-12-29 | 13 | 100% |
| 15 | 1.1.4 | 完成公司相关所有域名注册（dber.com.cn） | 1d | 2017-12-31 | 2017-12-31 | 11 |  |
| 16 | 1.2 | **2018/01** | 21d | 2018-01-01 | 2018-01-24 | 2 |  |
| 17 | 1.2.1 | **完成平台管理服务主要功能（店铺、消费、教练相关的）** | 2d | 2018-01-01 | 2018-01-02 |  |  |
| 18 | 1.2.1.1 | 账号绑定管理 | 2d | 2018-01-01 | 2018-01-02 | 2 |  |
| 19 | 1.2.2 | **完成消费端主要后端服务** | 12d | 2018-01-03 | 2018-01-16 |  |  |
| 20 | 1.2.2.1 | 登录管理 | 1d | 2018-01-03 | 2018-01-03 | 17 |  |
| 21 | 1.2.2.2 | 账号绑定或关联管理 | 1d | 2018-01-04 | 2018-01-04 | 20 |  |
| 22 | 1.2.2.3 | 真实会员头像管理 | 1d | 2018-01-05 | 2018-01-05 | 21 |  |
| 23 | 1.2.2.4 | **账户管理** | 6d | 2018-01-07 | 2018-01-12 | 22 |  |
| 24 | 1.2.2.4.1 | 充值管理 | 2d | 2018-01-07 | 2018-01-08 | 22 |  |
| 25 | 1.2.2.4.2 | 年卡管理 | 1d | 2018-01-09 | 2018-01-09 | 24 |  |
| 26 | 1.2.2.4.3 | 账单管理 | 1d | 2018-01-10 | 2018-01-10 | 25 |  |
| 27 | 1.2.2.4.4 | 年假管理 | 1d | 2018-01-11 | 2018-01-11 | 26 |  |
| 28 | 1.2.2.4.5 | 退款管理 | 1d | 2018-01-12 | 2018-01-12 | 27 |  |
| 29 | 1.2.2.5 | 店铺管理 | 1d | 2018-01-14 | 2018-01-14 | 23 |  |
| 30 | 1.2.2.6 | 店铺常规消费 | 2d | 2018-01-15 | 2018-01-16 | 29 |  |

| ID | WBS | Task | Duration | Start | Finish | Predecessors |
| --- | --- | --- | --- | --- | --- | --- |
| 31 | 1.2.3 | **成立成都动吧信息科技有限公司** | 7d | 2018-01-17 | 2018-01-24 | 19 |
| 32 | 1.2.3.1 | 成都各区高技公司政策优惠（财政补贴、场地提供、人才资金、税赋减免等） | 1d | 2018-01-17 | 2018-01-17 |  |
| 33 | 1.2.3.2 | 凑集注册资金及项目资金（20w） | 2d | 2018-01-18 | 2018-01-19 | 32 |
| 34 | 1.2.3.3 | 租赁办公场地 | 3d | 2018-01-21 | 2018-01-23 | 33 |
| 35 | 1.2.3.4 | 工商登记注册 | 1d | 2018-01-24 | 2018-01-24 | 34 |
| 36 | 1.3 | **2018/02 年前** | 25d | 2018-01-25 | 2018-02-28 | 16 |
| 37 | 1.3.1 | **完成店铺端后端开发** | 9d | 2018-01-25 | 2018-02-04 | 16 |
| 38 | 1.3.1.1 | 店铺评级管理 | 2d | 2018-01-25 | 2018-01-26 | 16 |
| 39 | 1.3.1.2 | 年卡管理 | 1d | 2018-01-28 | 2018-01-28 | 38 |
| 40 | 1.3.1.3 | 实时拥挤度 | 1d | 2018-01-29 | 2018-01-29 | 39 |
| 41 | 1.3.1.4 | 盈利管理 | 3d | 2018-01-30 | 2018-02-01 | 40 |
| 42 | 1.3.1.5 | 账户管理 | 1d | 2018-02-02 | 2018-02-02 | 41 |
| 43 | 1.3.1.6 | 促销管理 | 1d | 2018-02-04 | 2018-02-04 | 42 |
| 44 | 1.3.2 | **完成消费端、公司主页、店铺UI设计** | 6d | 2018-02-05 | 2018-02-11 | 37 |
| 45 | 1.3.2.1 | 消费端UI设计 | 3d | 2018-02-05 | 2018-02-07 | 37 |
| 46 | 1.3.2.2 | 公司主页UI设计 | 2d | 2018-02-08 | 2018-02-09 | 45 |
| 47 | 1.3.2.3 | 店铺UI设计 | 1d | 2018-02-11 | 2018-02-11 | 46 |
| 48 | 1.3.3 | **完成消费端后端开发** | 1d | 2018-02-12 | 2018-02-12 | 44 |
| 49 | 1.3.3.1 | 评价管理 | 1d | 2018-02-12 | 2018-02-12 | 44 |
| 50 | 1.3.4 | **完成平台服务开发** | 9d | 2018-02-13 | 2018-02-28 | 48 |
| 51 | 1.3.4.1 | 平台账单核算 | 2d | 2018-02-13 | 2018-02-14 | 48 |
| 52 | 1.3.4.2 | JOB管理 | 2d | 2018-02-21 | 2018-02-22 | 51 |
| 53 | 1.3.4.3 | 促销管理 | 2d | 2018-02-23 | 2018-02-25 | 52 |
| 54 | 1.3.4.4 | 统一支付(微信、支付宝、网银、QQ) | 3d | 2018-02-26 | 2018-02-28 | 53 |

| ID | WBS | Task | Duration | Start | Finish | Predecessors |
| --- | --- | --- | --- | --- | --- | --- |
| 55 | 1.4 | **2018/02 年后** | 33d | 2018-03-01 | 2018-04-08 | 36 |
| 56 | 1.4.1 | 完成店铺端界面开发、并且上线店铺端 | 5d | 2018-03-01 | 2018-03-06 |  |
| 57 | 1.4.2 | 开发消费端移动端 | 15d | 2018-03-07 | 2018-03-23 | 56 |
| 58 | 1.4.3 | 公司主页开发及上线 | 3d | 2018-03-25 | 2018-03-27 | 57 |
| 59 | 1.4.4 | **完成销售招聘、绩效策略、培训等（5-10人）** | 4d | 2018-03-28 | 2018-04-01 | 58 |
| 60 | 1.4.4.1 | 制定初创阶段销售绩效政策（2-4月） | 1d | 2018-03-28 | 2018-03-28 | 58 |
| 61 | 1.4.4.2 | 完成至少五位销售的招聘，并确保2月26前入职 | 3d | 2018-03-29 | 2018-04-01 | 60 |
| 62 | 1.4.5 | **联系地铁广告位租赁** | 6d | 2018-04-02 | 2018-04-08 | 59 |
| 63 | 1.4.5.1 | 制定租赁方案 | 1d | 2018-04-02 | 2018-04-02 | 59 |
| 64 | 1.4.5.2 | 寻求政府资源协助 | 3d | 2018-04-03 | 2018-04-05 | 63 |
| 65 | 1.4.5.3 | 谈判确保最低成本满足4月整月的租赁 | 2d | 2018-04-06 | 2018-04-08 | 64 |
| 66 | 1.5 | **2018/03 全月** | 7d | 2018-04-09 | 2018-04-16 | 55 |
| 67 | 1.5.1 | 3月店铺销售目标500家 | 1d | 2018-04-09 | 2018-04-09 |  |
| 68 | 1.5.2 | **2018/03 上旬** | 4d | 2018-04-09 | 2018-04-12 |  |
| 69 | 1.5.2.1 | 消费端移动端上线内测 | 1d | 2018-04-09 | 2018-04-09 | 55 |
| 70 | 1.5.2.2 | 招募线下消费端推广人员 | 3d | 2018-04-10 | 2018-04-12 | 69 |
| 71 | 1.5.3 | **2018/03 下旬** | 3d | 2018-04-13 | 2018-04-16 | 68 |
| 72 | 1.5.3.1 | 在25前完成店铺端、消费端内测完善 | 1d | 2018-04-13 | 2018-04-13 |  |
| 73 | 1.5.3.2 | 27日所有平台正式上线 | 1d | 2018-04-15 | 2018-04-15 | 72 |
| 74 | 1.5.3.3 | 30日开始为期一个月的线下推广 | 1d | 2018-04-16 | 2018-04-16 | 73 |
